# Frameworck

Schedule from MS Project, 2008-08-14 to 2008-09-11.

## Calendars

- Estándar: Mon-Fri 09:00-13:00, 15:00-19:00; Sat-Sun off.

## Resources

| Resource |
| --- |
| Marcelo Oviedo |
| Sebastian Biglia |
| Andres Aguirre |

## Schedule

| ID | WBS | Task | Type | Duration | Start | Finish | Predecessors | Total slack | Free slack | Resources | Work |
| --- | --- | --- | --- | --- | --- | --- | --- | --- | --- | --- | --- |
| 1 | 1 | **Frameworck 2.0** |  | 21d? | 2008-08-14 | 2008-09-11 |  | 0d |  |  | 24h |
| 2 | 1.1 | **Docuementos Generales** |  | 1d | 2008-08-14 | 2008-08-14 |  | 20d |  |  | 24h |
| 3 | 1.1.1 | Revisar doc de standares de codificacion |  | 1d | 2008-08-14 | 2008-08-14 |  | 20d | 0d | Andres Aguirre; Marcelo Oviedo; Sebastian Biglia | 24h |
| 4 | 1.1.2 | Documentos revisados | milestone | 0d | 2008-08-14 | 2008-08-14 | 3 | 20d |  |  |  |
| 5 | 1.2 | **Arquitectura** |  | 21d? | 2008-08-14 | 2008-09-11 |  | 0d |  |  |  |
| 6 | 1.2.1 | **BackEnd** |  | 21d? | 2008-08-14 | 2008-09-11 |  | 0d |  |  |  |
| 7 | 1.2.1.1 | **Documentacion** |  | 3.5d | 2008-08-14 | 2008-08-19 |  | 17.5d |  |  |  |
| 8 | 1.2.1.1.1 | **Nomenclaturas** |  | 1.5d | 2008-08-14 | 2008-08-15 |  | 19.5d |  |  |  |
| 9 | 1.2.1.1.1.1 | Servicios |  | 0.5d | 2008-08-14 | 2008-08-14 |  | 14.5d | 0d |  |  |
| 10 | 1.2.1.1.1.2 | Store Procedures |  | 0.5d | 2008-08-14 | 2008-08-14 | 9 | 14.5d | 0d |  |  |
| 11 | 1.2.1.1.1.3 | Namespases |  | 0.5d | 2008-08-15 | 2008-08-15 | 10 | 14.5d | 0d |  |  |
| 12 | 1.2.1.1.1.4 | Doc. Nomenclaturas finalizadas | milestone | 0d | 2008-08-15 | 2008-08-15 | 11 | 14.5d |  |  |  |
| 13 | 1.2.1.1.2 | Revisar Doc. Arquitectura Simple |  | 2d | 2008-08-14 | 2008-08-15 |  | 17.5d | 0d |  |  |
| 14 | 1.2.1.1.3 | Documento Arquitectura Simple Revisado y Actualizado | milestone | 0d | 2008-08-15 | 2008-08-15 | 13 | 19d |  |  |  |
| 15 | 1.2.1.1.4 | **Patrones de desarrollo comunes** |  | 1.5d | 2008-08-18 | 2008-08-19 |  | 17.5d |  |  |  |
| 16 | 1.2.1.1.4.1 | Servicios con paginacion |  | 0.5d | 2008-08-18 | 2008-08-18 | 13 | 17.5d | 0d |  |  |
| 17 | 1.2.1.1.4.2 | Transacciones en Batch |  | 0.5d | 2008-08-18 | 2008-08-18 | 16 | 17.5d | 0d |  |  |
| 18 | 1.2.1.1.4.3 | Servicios con Paginacion |  | 0.5d | 2008-08-19 | 2008-08-19 | 17 | 17.5d | 0d |  |  |
| 19 | 1.2.1.1.4.4 | Documento con patrones comunes finalizado | milestone | 0d | 2008-08-19 | 2008-08-19 | 18 | 17.5d |  |  |  |
| 20 | 1.2.1.2 | **Dispatchers** |  | 21d? | 2008-08-14 | 2008-09-11 |  | 0d |  |  |  |
| 21 | 1.2.1.2.1 | **Patrones de envio de mensages** |  | 11d? | 2008-08-14 | 2008-08-28 |  | 0d |  |  |  |
| 22 | 1.2.1.2.1.1 | Diseñar Pregunta-Respuesta asincrónico (CallBacks) |  | 2d | 2008-08-14 | 2008-08-15 |  | 0d |  |  |  |
| 23 | 1.2.1.2.1.2 | Documento de Pregunta-Respuesta asincrónico (CallBacks) | milestone | 0d | 2008-08-15 | 2008-08-15 | 22 | 0d |  |  |  |
| 24 | 1.2.1.2.1.3 | Implementar Pregunta-Respuesta asincrónico (CallBacks) |  | 3d | 2008-08-18 | 2008-08-20 | 23 | 0d |  |  |  |
| 25 | 1.2.1.2.1.4 | Pregunta-Respuesta asincrónico (CallBacks) integrado | milestone | 0d | 2008-08-20 | 2008-08-20 | 24 | 0d |  |  |  |
| 26 | 1.2.1.2.1.5 | Diseñar Pregunta-Respuesta Sincrona |  | 1d | 2008-08-21 | 2008-08-21 | 25 | 0d |  |  |  |
| 27 | 1.2.1.2.1.6 | Documento Pregunta-Respuesta Sincrona | milestone | 0d | 2008-08-21 | 2008-08-21 | 26 | 0d |  |  |  |
| 28 | 1.2.1.2.1.7 | Implementar Pregunta-Respuesta Sincrona |  | 1d? | 2008-08-22 | 2008-08-22 | 27 | 0d |  |  |  |
| 29 | 1.2.1.2.1.8 | Pregunta-Respuesta Sincrona Integrado | milestone | 0d | 2008-08-22 | 2008-08-22 | 28 | 0d |  |  |  |
| 30 | 1.2.1.2.1.9 | Diseñar Servicio de procesamiento por lotes transaccional asincrono desconectado |  | 3d | 2008-08-25 | 2008-08-27 | 29 | 0d |  |  |  |
| 31 | 1.2.1.2.1.10 | Documento del Servicio de procesamiento por lotes transaccional asincrono desconectado |  | 1d? | 2008-08-28 | 2008-08-28 | 30 | 0d |  |  |  |
| 32 | 1.2.1.2.1.11 | Servicio de procesamiento por lotes transacciona Asincrono desconectado integrado | milestone | 0d | 2008-08-28 | 2008-08-28 | 31 | 0d |  |  |  |
| 33 | 1.2.1.2.1.12 | Patrones de envio de mensages diceñados y desarrollados | milestone | 0d | 2008-08-28 | 2008-08-28 | 32 | 0d |  |  |  |

| ID | WBS | Task | Type | Duration | Start | Finish | Predecessors | Total slack | Free slack |
| --- | --- | --- | --- | --- | --- | --- | --- | --- | --- |
| 34 | 1.2.1.2.2 | **Sistema deamon** |  | 7d? | 2008-08-14 | 2008-08-22 |  | 14d |  |
| 35 | 1.2.1.2.2.1 | Diceñar estándar de servicios para sistemas Deamons |  | 3d | 2008-08-14 | 2008-08-18 |  | 14d | 0d |
| 36 | 1.2.1.2.2.2 | Documento arquitectura de sistema deamon | milestone | 0d | 2008-08-18 | 2008-08-18 | 35 | 14d | 0d |
| 37 | 1.2.1.2.2.3 | Desarrollo del servicio deamon |  | 3d | 2008-08-19 | 2008-08-21 | 36 | 14d | 0d |
| 38 | 1.2.1.2.2.4 | Codigo fuente de componentes Deamon | milestone | 0d | 2008-08-21 | 2008-08-21 | 37 | 14d | 0d |
| 39 | 1.2.1.2.2.5 | Generar Deamon Installer |  | 1d? | 2008-08-22 | 2008-08-22 | 38 | 14d | 0d |
| 40 | 1.2.1.2.2.6 | Installer para Deamon Finalizado | milestone | 0d | 2008-08-22 | 2008-08-22 | 39 | 14d |  |
| 41 | 1.2.1.2.3 | **Orchestator/Service Dispatcher** |  | 10d? | 2008-08-29 | 2008-09-11 |  | 0d |  |
| 42 | 1.2.1.2.3.1 | Implementar Catching en el orquestador de servicios |  | 2d | 2008-08-29 | 2008-09-01 | 33 | 0d |  |
| 43 | 1.2.1.2.3.2 | Implementar manejo de errores en el orquestador de servicios |  | 4d | 2008-09-02 | 2008-09-05 | 42 | 0d |  |
| 44 | 1.2.1.2.3.3 | Implementar criptografia de mensajes en el orquestador de servicios |  | 3d | 2008-09-08 | 2008-09-10 | 43 | 0d |  |
| 45 | 1.2.1.2.3.4 | Codigo fuente del dispatcher con las implementaciones | milestone | 0d | 2008-09-10 | 2008-09-10 | 44 | 0d |  |
| 46 | 1.2.1.2.3.5 | Generar Remoting Installer |  | 1d? | 2008-09-11 | 2008-09-11 | 45 | 0d |  |
| 47 | 1.2.1.2.3.6 | Installer Remoting Finalizado | milestone | 0d | 2008-09-11 | 2008-09-11 | 46 | 0d |  |
| 48 | 1.2.1.2.3.7 | Generar WebService Installer |  | 1d? | 2008-09-11 | 2008-09-11 | 45 | 0d |  |
| 49 | 1.2.1.2.3.8 | Installer para Wservice Finalizado | milestone | 0d | 2008-09-11 | 2008-09-11 | 48 | 0d |  |
| 50 | 1.2.2 | **FrontEnd** |  | 3d | 2008-08-14 | 2008-08-18 |  | 18d |  |
| 51 | 1.2.2.1 | Definir Arquitectura para Win32 |  | 3d | 2008-08-14 | 2008-08-18 |  | 18d | 0d |
| 52 | 1.2.2.2 | Documento de arquitectura con el modelo de Front end para win32 | milestone | 0d | 2008-08-18 | 2008-08-18 | 51 | 18d |  |
| 53 | 1.2.2.3 | Definir arquitectura para ASP.Net |  | 3d | 2008-08-14 | 2008-08-18 |  | 18d | 0d |
| 54 | 1.2.2.4 | Documento de arquitectura con el modelo de Front end para ASP .Net | milestone | 0d | 2008-08-18 | 2008-08-18 | 53 | 18d |  |
| 55 | 1.3 | **Component Blocks** |  | 4d? | 2008-08-14 | 2008-08-19 |  | 2d |  |
| 56 | 1.3.1 | **Configuration** |  | 1d? | 2008-08-14 | 2008-08-14 |  | 20d |  |
| 57 | 1.3.1.1 | Revisar documentacion del sistema de configuracion |  | 0.5d | 2008-08-14 | 2008-08-14 |  | 20.5d |  |
| 58 | 1.3.1.2 | Revisar bloque existente por mejoras |  | 1d | 2008-08-14 | 2008-08-14 |  | 20d |  |
| 59 | 1.3.1.3 | Generar Instalador de los servicios de configuracion |  | 1d? | 2008-08-14 | 2008-08-14 |  | 20d | 0d |
| 60 | 1.3.1.4 | Instalador de los servicios de configuracion Finalizado | milestone | 0d | 2008-08-14 | 2008-08-14 | 59 | 20d |  |

| ID | WBS | Task | Type | Duration | Start | Finish | Predecessors | Total slack | Free slack |
| --- | --- | --- | --- | --- | --- | --- | --- | --- | --- |
| 61 | 1.3.2 | **Exceptions** |  | 1d? | 2008-08-14 | 2008-08-14 |  | 20d |  |
| 62 | 1.3.2.1 | **RevisarBloque existente** |  | 1d? | 2008-08-14 | 2008-08-14 |  | 20d |  |
| 63 | 1.3.2.1.1 | BlockingFunctionalException |  | 1d? | 2008-08-14 | 2008-08-14 |  | 20d | 0d |
| 64 | 1.3.2.1.2 | ProcessConnectionsException |  | 1d? | 2008-08-14 | 2008-08-14 |  | 20d | 0d |
| 65 | 1.3.2.1.3 | ExceptionHelper |  | 1d? | 2008-08-14 | 2008-08-14 |  | 20d | 0d |
| 66 | 1.3.2.1.4 | Bloque Actualizado | milestone | 0d | 2008-08-14 | 2008-08-14 | 63, 64, 65 | 20d |  |
| 67 | 1.3.3 | **Security** |  | 4d? | 2008-08-14 | 2008-08-19 |  | 4d |  |
| 68 | 1.3.3.1 | Analisis mejor algoritmo Cryptography |  | 1d? | 2008-08-14 | 2008-08-14 |  | 5d | 1d |
| 69 | 1.3.3.2 | Implemantar algoritmo criptografico en el bloque |  | 2d | 2008-08-14 | 2008-08-15 |  | 4d | 0d |
| 70 | 1.3.3.3 | Criptografia implementada en el bloque de Fwk.Security | milestone | 0d | 2008-08-15 | 2008-08-15 | 68, 69 | 4d | 2d |
| 71 | 1.3.3.4 | **Fwk Profile Mannager (AzMan)** |  | 4d? | 2008-08-14 | 2008-08-19 |  | 17d |  |
| 72 | 1.3.3.4.1 | Analisis mercado |  | 1d? | 2008-08-14 | 2008-08-14 |  | 17d | 0d |
| 73 | 1.3.3.4.2 | Diseño/documentacion Bloque |  | 2d | 2008-08-15 | 2008-08-18 | 72 | 17d | 0d |
| 74 | 1.3.3.4.3 | Documento con diceño del bloque | milestone | 0d | 2008-08-18 | 2008-08-18 | 73 | 17d | 0d |
| 75 | 1.3.3.4.4 | Desarrollo del bloque |  | 1d? | 2008-08-19 | 2008-08-19 | 74 | 17d | 0d |
| 76 | 1.3.3.4.5 | Bloque desarrollado | milestone | 0d | 2008-08-19 | 2008-08-19 | 75 | 17d |  |
| 77 | 1.3.4 | **Logging** |  | 2d? | 2008-08-14 | 2008-08-15 |  | 4d |  |
| 78 | 1.3.4.1 | Analisis Mercado |  | 1d? | 2008-08-14 | 2008-08-14 |  | 4d | 0d |
| 79 | 1.3.4.2 | Resultado del analisis | milestone | 0d | 2008-08-14 | 2008-08-14 | 78 | 4d | 0d |
| 80 | 1.3.4.3 | Existente (incorporar mejoras) |  | 1d? | 2008-08-15 | 2008-08-15 | 79 | 4d | 0d |
| 81 | 1.3.4.4 | Bloque actualizado | milestone | 0d | 2008-08-15 | 2008-08-15 | 80 | 4d | 2d |
| 82 | 1.3.5 | **Catching** |  | 2d | 2008-08-14 | 2008-08-15 |  | 4d |  |
| 83 | 1.3.5.1 | Actualizar existente en el framework |  | 2d | 2008-08-14 | 2008-08-15 |  | 4d | 0d |
| 84 | 1.3.5.2 | Codigo fuente actualizado | milestone | 0d | 2008-08-15 | 2008-08-15 | 83 | 4d | 2d |

| ID | WBS | Task | Type | Duration | Start | Finish | Predecessors | Total slack | Free slack |
| --- | --- | --- | --- | --- | --- | --- | --- | --- | --- |
| 85 | 1.3.6 | **Blocking** |  | 4d? | 2008-08-14 | 2008-08-19 |  | 2d |  |
| 86 | 1.3.6.1 | Analisis y Diseño Modelo Blocking |  | 1d? | 2008-08-14 | 2008-08-14 |  | 2d | 0d |
| 87 | 1.3.6.2 | Resultado del analisis | milestone | 0d | 2008-08-14 | 2008-08-14 | 86 | 2d | 0d |
| 88 | 1.3.6.3 | **Patrones de implementacion** |  | 2d? | 2008-08-15 | 2008-08-18 |  | 2d |  |
| 89 | 1.3.6.3.1 | Blocking en BackEnd |  | 1d? | 2008-08-15 | 2008-08-15 | 87 | 2d | 0d |
| 90 | 1.3.6.3.2 | Blocking en FrontEnd |  | 1d? | 2008-08-18 | 2008-08-18 | 89 | 2d | 0d |
| 91 | 1.3.6.4 | Desarrollo del bloque de Blocking |  | 1d? | 2008-08-19 | 2008-08-19 | 90 | 2d | 0d |
| 92 | 1.3.6.5 | Bloque de Blocking finalizado | milestone | 0d | 2008-08-19 | 2008-08-19 | 91 | 2d | 0d |
| 93 | 1.3.7 | Component Blocks Finalizado | milestone | 0d | 2008-08-19 | 2008-08-19 | 84, 92, 70, 81 | 2d | 0d |
| 94 | 1.4 | **UI Component Blocks** |  | 9d? | 2008-08-14 | 2008-08-26 |  | 6d |  |
| 95 | 1.4.1 | **Definir userControls Standars como bases** |  | 6d? | 2008-08-14 | 2008-08-21 |  | 15d |  |
| 96 | 1.4.1.1 | FwkTextBox |  | 1d? | 2008-08-14 | 2008-08-14 |  | 15d | 0d |
| 97 | 1.4.1.2 | FwkComboBox |  | 1d? | 2008-08-15 | 2008-08-15 | 96 | 15d | 0d |
| 98 | 1.4.1.3 | FwkFormsConnectors |  | 1d? | 2008-08-18 | 2008-08-18 | 97 | 15d | 0d |
| 99 | 1.4.1.4 | FwkDataGrid |  | 1d? | 2008-08-19 | 2008-08-19 | 98 | 15d | 0d |
| 100 | 1.4.1.5 | FwkListBox |  | 1d? | 2008-08-20 | 2008-08-20 | 99 | 15d | 0d |
| 101 | 1.4.1.6 | FwkPropertyView |  | 1d? | 2008-08-21 | 2008-08-21 | 100 | 15d | 0d |
| 102 | 1.4.1.7 | Componentes mejorador por definicion en el frameworck | milestone | 0d | 2008-08-21 | 2008-08-21 | 101 | 15d |  |
| 103 | 1.4.2 | **Interfases y clases bases para Formularios y UserControl de negocio** |  | 2d? | 2008-08-20 | 2008-08-21 |  | 2d |  |
| 104 | 1.4.2.1 | Implementar Catching |  | 2d | 2008-08-20 | 2008-08-21 | 93 | 2d | 0d |
| 105 | 1.4.2.2 | Clases bases del frameworck implementada con catching | milestone | 0d | 2008-08-21 | 2008-08-21 | 104 | 2d | 0d |
| 106 | 1.4.2.3 | Implementar blocking |  | 2d | 2008-08-20 | 2008-08-21 | 93 | 2d | 0d |
| 107 | 1.4.2.4 | Clases bases del frameworck implementada con blocking | milestone | 0d | 2008-08-21 | 2008-08-21 | 106 | 2d | 0d |
| 108 | 1.4.2.5 | Implementar Login |  | 1d? | 2008-08-20 | 2008-08-20 | 93 | 3d | 0d |
| 109 | 1.4.2.6 | Clases bases del frameworck implementada con login | milestone | 0d | 2008-08-20 | 2008-08-20 | 108 | 3d | 1d |
| 110 | 1.4.2.7 | Implementar Criptografia |  | 2d | 2008-08-20 | 2008-08-21 | 93 | 2d | 0d |
| 111 | 1.4.2.8 | Clases bases del frameworck implementada con Criptografia | milestone | 0d | 2008-08-21 | 2008-08-21 | 110 | 2d | 0d |
| 112 | 1.4.2.9 | Interfases y clases bases para Formularios y UserControl de negocio | milestone | 0d | 2008-08-21 | 2008-08-21 | 111, 105, 107, 109 | 2d | 0d |

Notes:
- 95: Diceñar / Atributos base / Designers

| ID | WBS | Task | Type | Duration | Start | Finish | Predecessors | Total slack | Free slack |
| --- | --- | --- | --- | --- | --- | --- | --- | --- | --- |
| 113 | 1.4.3 | **Interface Wrapper** |  | 3d? | 2008-08-22 | 2008-08-26 |  | 2d |  |
| 114 | 1.4.3.1 | Analisis manejo de errores |  | 1d? | 2008-08-22 | 2008-08-22 | 112 | 2d | 0d |
| 115 | 1.4.3.2 | Adaptacion para multiples conecciones (mas de un dispatcher) |  | 1d? | 2008-08-25 | 2008-08-25 | 114 | 2d | 0d |
| 116 | 1.4.3.3 | Resolver lectura de informacion de servicios del lado del cliente |  | 1d? | 2008-08-26 | 2008-08-26 | 115 | 2d | 0d |
| 117 | 1.4.3.4 | Bloque del Wrapper Finalizado | milestone | 0d | 2008-08-26 | 2008-08-26 | 116 | 2d | 0d |
| 118 | 1.5 | **Factory Tools** |  | 13d? | 2008-08-14 | 2008-09-01 |  | 8d |  |
| 119 | 1.5.1 | **Knowledgebase** |  | 4.5d? | 2008-08-14 | 2008-08-20 |  | 16.5d |  |
| 120 | 1.5.1.1 | Investigar Mercado (Sharepoint) |  | 1.5d? | 2008-08-14 | 2008-08-15 |  | 16.5d | 0d |
| 121 | 1.5.1.2 | Implementar |  | 3d | 2008-08-15 | 2008-08-20 | 120 | 16.5d | 0d |
| 122 | 1.5.1.3 | Sitio con Knowledgebase | milestone | 0d | 2008-08-20 | 2008-08-20 | 121 | 16.5d |  |
| 123 | 1.5.2 | **ServiceManagemment** |  | 4d? | 2008-08-27 | 2008-09-01 |  | 8d |  |
| 124 | 1.5.2.1 | Analizar control de cambio al ServiceManagemment existente |  | 1d? | 2008-08-27 | 2008-08-27 | 117 | 8d | 0d |
| 125 | 1.5.2.2 | Implementar control de cambio al ServiceManagemment existente |  | 3d | 2008-08-28 | 2008-09-01 | 124 | 8d | 0d |
| 126 | 1.5.2.3 | App ServiceManagemment finalizada | milestone | 0d | 2008-09-01 | 2008-09-01 | 125 | 8d |  |
| 127 | 1.5.3 | **Application Configuration** |  | 4d | 2008-08-14 | 2008-08-19 |  | 17d |  |
| 128 | 1.5.3.1 | Desarrollo Herramienta para gestion de archivos del sistema de Configuracion del frameworck |  | 2d | 2008-08-14 | 2008-08-15 |  | 19d | 0d |
| 129 | 1.5.3.2 | Herramienta para gestion de archivos del sistema de Configuracion del frameworck Finalizada | milestone | 0d | 2008-08-15 | 2008-08-15 | 128 | 19d |  |
| 130 | 1.5.3.3 | Desarrollo Herramienta de configuracion de aplicaciones cliente y servidor que usan el frameworck |  | 4d | 2008-08-14 | 2008-08-19 |  | 17d | 0d |
| 131 | 1.5.3.4 | Herramienta de configuracion de aplicaciones cliente y servidor que usan el frameworck Finalizada | milestone | 0d | 2008-08-19 | 2008-08-19 | 130 | 17d |  |
| 132 | 1.6 | **Ejemplos Uso Framework + Arquitectura** |  | 10d? | 2008-08-27 | 2008-09-09 |  | 2d |  |
| 133 | 1.6.1 | Desarrollo de BackEnd de ejemplo que utilice los servicios de manera simple |  | 3d | 2008-08-27 | 2008-08-29 | 117 | 2d | 0d |
| 134 | 1.6.2 | Desarrollo testing con Nunit |  | 1d? | 2008-09-01 | 2008-09-01 | 133 | 2d | 0d |
| 135 | 1.6.3 | Desarrollo de Aplicación cliente |  | 2d | 2008-09-02 | 2008-09-03 | 134 | 2d | 0d |
| 136 | 1.6.4 | Integrar ejemplo con catching |  | 1d | 2008-09-04 | 2008-09-04 | 135 | 2d | 0d |
| 137 | 1.6.5 | Integrar ejemplo con blocking |  | 1d | 2008-09-05 | 2008-09-05 | 136 | 2d | 0d |
| 138 | 1.6.6 | Integrar ejemplo con login para auditoria de servicios |  | 1d | 2008-09-08 | 2008-09-08 | 137 | 2d | 0d |
| 139 | 1.6.7 | Integrar Sistema de configuracion |  | 1d? | 2008-09-09 | 2008-09-09 | 138 | 2d | 0d |
| 140 | 1.6.8 | Codigo de BackEnd y front End Finalizado | milestone | 0d | 2008-09-09 | 2008-09-09 | 139 | 2d |  |

Notes:
- 124: ServiceManagemment es una plicacion para administrar los servicios que generan los desarrolladores / permite busqueda de servicios en base de datos o un archivo xml dependiendo de IServiceConfigurationManager / utilizado.

| ID | WBS | Task | Type | Duration | Start | Finish | Predecessors | Total slack | Free slack |
| --- | --- | --- | --- | --- | --- | --- | --- | --- | --- |
| 141 | 1.7 | **Migracion del Framework Visual Studio 2005 a 2008 (.net fwk 2.0 a 3.5) + Integrar con enterprice librares 4.0 (de 3.0 a 4.0)** |  | 5d? | 2008-08-14 | 2008-08-20 |  | 16d |  |
| 142 | 1.7.1 | Solucion FWK (Component Blocks) |  | 1d | 2008-08-14 | 2008-08-14 |  | 16d | 0d |
| 143 | 1.7.2 | Component Blocks migrados | milestone | 0d | 2008-08-14 | 2008-08-14 | 142 | 16d | 0d |
| 144 | 1.7.3 | Solucion Fwk.FrontEnd (UI Component Blocks) |  | 2d | 2008-08-15 | 2008-08-18 | 143 | 16d | 0d |
| 145 | 1.7.4 | UI component Blocks migrados | milestone | 0d | 2008-08-18 | 2008-08-18 | 144 | 16d | 0d |
| 146 | 1.7.5 | RemotingDispatcher |  | 1d | 2008-08-19 | 2008-08-19 | 145 | 17d | 0d |
| 147 | 1.7.6 | RemotingDispatcher migrado | milestone | 0d | 2008-08-19 | 2008-08-19 | 146 | 17d |  |
| 148 | 1.7.7 | WebServiceDispatcher |  | 1d | 2008-08-19 | 2008-08-19 | 145 | 16d | 0d |
| 149 | 1.7.8 | WebServiceDispatcher migrado | milestone | 0d | 2008-08-19 | 2008-08-19 | 148 | 16d | 0d |
| 150 | 1.7.9 | Frameworck migrado | milestone | 0d | 2008-08-19 | 2008-08-19 | 149 | 16d | 0d |
| 151 | 1.7.10 | **FrameworkTools** |  | 1d? | 2008-08-20 | 2008-08-20 |  | 16d |  |
| 152 | 1.7.10.1 | Code generator |  | 1d? | 2008-08-20 | 2008-08-20 | 150 | 16d | 0d |
| 153 | 1.7.10.2 | Code generator migrado | milestone | 0d | 2008-08-20 | 2008-08-20 | 152 | 16d |  |
| 154 | 1.7.10.3 | Application Configuration |  | 1d? | 2008-08-20 | 2008-08-20 | 150 | 16d | 0d |
| 155 | 1.7.10.4 | Application Configuration migrada | milestone | 0d | 2008-08-20 | 2008-08-20 | 154 | 16d |  |
| 156 | 1.7.10.5 | ServiceManagemment |  | 1d? | 2008-08-20 | 2008-08-20 | 150 | 16d | 0d |
| 157 | 1.7.10.6 | ServiceManagemment migrada | milestone | 0d | 2008-08-20 | 2008-08-20 | 156 | 16d |  |
